# FRIDGE Диаграмма Ганта по WBS

Schedule from MS Project XML, 2026-10-19 to 2026-12-09.

## Calendars

- FRIDGE Будни 8 часов: Mon-Fri 08:00-12:00, 13:00-17:00; Sat-Sun off.
- FRIDGE Подготовка 3 часа 15 минут: Mon-Fri 08:00-11:15; Sat-Sun off.

## Resources

| Resource |
| --- |
| Пешков Никита |
| Буглак Даниил |
| Сковороднев Денис |
| Ярмов Никита |

## Schedule

| ID | WBS | Task | Type | Duration | Start | Finish | Predecessors | Constraint | Deadline | Calendar | Resources | Work |
| --- | --- | --- | --- | --- | --- | --- | --- | --- | --- | --- | --- | --- |
| 1 | 1.1.1 | Подготовить устав проекта: цель, границы, критерии приёмки и ограничения. |  | 6h | 2026-10-19 | 2026-10-20 | 54 |  |  | FRIDGE Подготовка 3 часа 15 минут | Пешков Никита | 6h |
| 2 | 1.1.2 | Согласовать состав модулей, результаты и оценки задач ИСР. |  | 3h | 2026-10-21 | 2026-10-22 | 4 |  |  | FRIDGE Подготовка 3 часа 15 минут | Пешков Никита; Буглак Даниил; Сковороднев Денис; Ярмов Никита | 12h |
| 3 | 1.1.3 | Составить зависимости задач, PERT-оценки и календарный план. |  | 11h | 2026-11-12 | 2026-11-17 | 28 |  |  | FRIDGE Подготовка 3 часа 15 минут | Пешков Никита | 11h |
| 4 | 1.1.4 | Подтвердить распределение ролей и доступное время каждого участника. |  | 1h | 2026-10-20 | 2026-10-21 | 1 |  |  | FRIDGE Подготовка 3 часа 15 минут | Пешков Никита; Буглак Даниил; Сковороднев Денис; Ярмов Никита | 4h |
| 5 | 1.2.1 | Проводить планирование, короткие встречи, обзор результата и ретроспективу. |  | 6h | 2026-10-26 | 2026-10-28 | 7 |  |  | FRIDGE Подготовка 3 часа 15 минут | Пешков Никита | 6h |
| 6 | 1.2.2 | Обновлять статус задач, фактическое время и блокеры в GitHub Issues/Projects. |  | 2h | 2026-12-07 | 2026-12-07 | 21 |  |  |  | Пешков Никита; Буглак Даниил; Сковороднев Денис; Ярмов Никита | 8h |
| 7 | 1.2.3 | Вести реестр рисков, оценивать вероятность и влияние. |  | 6h | 2026-10-22 | 2026-10-26 | 15 |  |  | FRIDGE Подготовка 3 часа 15 минут | Пешков Никита | 6h |
| 8 | 1.2.4 | Сообщать о технических и командных рисках и предлагать меры. |  | 2h | 2026-11-23 | 2026-11-24 | 33 |  |  | FRIDGE Подготовка 3 часа 15 минут | Пешков Никита; Буглак Даниил; Сковороднев Денис; Ярмов Никита | 8h |
| 9 | 1.2.5 | Собирать плановые и фактические трудозатраты, рассчитывать EVM. |  | 4h | 2026-12-07 | 2026-12-08 | 10 |  |  |  | Пешков Никита | 4h |
| 10 | 1.2.6 | Подтверждать процент готовности задач и затраченное время для EVM. |  | 2h | 2026-12-07 | 2026-12-07 | 6 |  |  |  | Пешков Никита; Буглак Даниил; Сковороднев Денис; Ярмов Никита | 8h |
| 11 | 1.2.7 | Оформлять Change Request и анализировать влияние изменений. |  | 4h | 2026-11-24 | 2026-11-25 | 8 |  |  | FRIDGE Подготовка 3 часа 15 минут | Пешков Никита | 4h |
| 12 | 1.2.8 | Рассматривать Change Request на командном совете и фиксировать решение. |  | 2h | 2026-11-25 | 2026-11-25 | 11 |  |  | FRIDGE Подготовка 3 часа 15 минут | Пешков Никита; Буглак Даниил; Сковороднев Денис; Ярмов Никита | 8h |
| 13 | 1.3.1 | Провести ретроспективу Start–Stop–Continue и записать Lessons Learned. |  | 1h | 2026-12-08 | 2026-12-08 | 9, 23 |  |  |  | Пешков Никита; Буглак Даниил; Сковороднев Денис; Ярмов Никита | 4h |
| 14 | 1.3.2 | Собрать артефакты и подготовить защиту проекта. |  | 6h | 2026-12-08 | 2026-12-09 | 13 |  |  |  | Пешков Никита | 6h |
| 15 | 2.1.1 | Создать GitHub-репозиторий, выдать доступ участникам, добавить описание и README. |  | 2h | 2026-10-22 | 2026-10-22 | 2 |  |  | FRIDGE Подготовка 3 часа 15 минут | Пешков Никита | 2h |
| 16 | 2.1.2 | Согласовать Git-flow: main, develop, feature/*, release/* и hotfix/*. |  | 1h | 2026-11-17 | 2026-11-17 | 3 |  |  | FRIDGE Подготовка 3 часа 15 минут | Пешков Никита; Буглак Даниил; Сковороднев Денис; Ярмов Никита | 4h |
| 17 | 2.1.3 | Настроить правила защиты main/develop, обязательный PR и проверку CI. |  | 2h | 2026-12-03 | 2026-12-03 | 20 |  |  |  | Сковороднев Денис | 2h |
| 18 | 2.1.4 | После выбора стека описать запуск проекта и при необходимости добавить Docker Compose. |  | 4h | 2026-11-26 | 2026-11-26 | 12, 58 |  |  |  | Сковороднев Денис | 4h |
| 19 | 2.1.5 | Подготовить воспроизводимые тестовые данные и отдельную тестовую среду. |  | 4h | 2026-11-19 | 2026-11-20 | 46 |  |  | FRIDGE Подготовка 3 часа 15 минут | Ярмов Никита | 4h |
| 20 | 2.2.1 | Настроить сборку и линтер для выбранного стека в CI. |  | 4h | 2026-12-03 | 2026-12-03 | 49 |  |  |  | Сковороднев Денис | 4h |
| 21 | 2.2.2 | Добавить запуск модульных и интеграционных тестов на PR. |  | 4h | 2026-12-04 | 2026-12-07 | 17, 53 |  |  |  | Сковороднев Денис; Ярмов Никита | 8h |
| 22 | 2.2.3 | Определить тестовый хостинг и автоматизировать CD после его выбора. |  | 4h | 2026-12-07 | 2026-12-08 | 10 |  |  |  | Сковороднев Денис | 4h |
| 23 | 2.2.4 | Проверять доступность тестового стенда и фиксировать сбои. |  | 2h | 2026-12-08 | 2026-12-08 | 22 |  |  |  | Ярмов Никита | 2h |
| 24 | 3.1.1 | Описать сценарии ввода ингредиентов, поиска и просмотра рецепта как User Stories. |  | 8h | 2026-10-22 | 2026-10-26 | 2 |  |  | FRIDGE Подготовка 3 часа 15 минут | Ярмов Никита | 8h |
| 25 | 3.1.2 | Согласовать критерии приёмки, Definition of Done и граничные случаи. |  | 5h | 2026-11-06 | 2026-11-10 | 41 |  |  | FRIDGE Подготовка 3 часа 15 минут | Ярмов Никита | 5h |
| 26 | 3.1.3 | Определить правила сопоставления ингредиентов, единиц и замен. |  | 6h | 2026-10-26 | 2026-10-28 | 24 |  |  | FRIDGE Подготовка 3 часа 15 минут | Ярмов Никита | 6h |
| 27 | 3.2.1 | Подготовить макеты ввода продуктов, выдачи и карточки рецепта. |  | 11h | 2026-10-29 | 2026-11-03 | 29 |  |  | FRIDGE Подготовка 3 часа 15 минут | Ярмов Никита | 11h |
| 28 | 3.2.2 | Проверить макеты, доступность и техническую реализуемость. |  | 2h | 2026-11-11 | 2026-11-12 | 5, 36, 48 |  |  | FRIDGE Подготовка 3 часа 15 минут | Пешков Никита; Буглак Даниил; Сковороднев Денис; Ярмов Никита | 8h |
| 29 | 4.1.1 | Описать добавление, удаление, количество и нормализацию названий продуктов. |  | 4h | 2026-10-28 | 2026-10-29 | 26 |  |  | FRIDGE Подготовка 3 часа 15 минут | Ярмов Никита | 4h |
| 30 | 4.1.2 | Определить формат ингредиента и контракт передачи списка для поиска. |  | 5h | 2026-10-29 | 2026-11-02 | 29 |  |  | FRIDGE Подготовка 3 часа 15 минут | Сковороднев Денис | 5h |
| 31 | 4.1.3 | Сверстать поле ввода и список выбранных ингредиентов по макету. |  | 11h | 2026-11-26 | 2026-11-27 | 57 |  |  |  | Пешков Никита | 11h |
| 32 | 4.1.4 | Связать ввод с поисковым запросом, обработать пустое и ошибочное состояние. |  | 6h | 2026-11-30 | 2026-12-01 | 31, 37, 50 |  |  |  | Буглак Даниил | 6h |
| 33 | 4.1.5 | Подготовить позитивные и негативные тест-кейсы параллельно с разработкой. |  | 3h | 2026-11-20 | 2026-11-23 | 19 |  |  | FRIDGE Подготовка 3 часа 15 минут | Ярмов Никита | 3h |
| 34 | 4.1.6 | Проверить модуль, завести баги в GitHub Issues и подтвердить исправления. |  | 4h | 2026-12-01 | 2026-12-01 | 32 |  |  |  | Ярмов Никита | 4h |
| 35 | 4.2.1 | Определить обязательные поля рецепта и критерии качества данных. |  | 4h | 2026-11-04 | 2026-11-05 | 27 |  |  | FRIDGE Подготовка 3 часа 15 минут | Ярмов Никита | 4h |
| 36 | 4.2.2 | Подготовить модель рецепта, ингредиентов, количества и шагов приготовления. |  | 6h | 2026-11-05 | 2026-11-09 | 30, 35 |  |  | FRIDGE Подготовка 3 часа 15 минут | Сковороднев Денис | 6h |
| 37 | 4.2.3 | Реализовать получение рецептов и подготовить небольшую проверяемую выборку. |  | 11h | 2026-11-26 | 2026-11-27 | 18 |  |  |  | Сковороднев Денис | 11h |
| 38 | 4.2.4 | Сверстать карточку рецепта и состояния загрузки по макету. |  | 6h | 2026-12-01 | 2026-12-01 | 32 |  |  |  | Буглак Даниил | 6h |
| 39 | 4.2.5 | Интегрировать карточку с источником данных по согласованному контракту. |  | 4h | 2026-12-01 | 2026-12-02 | 38 |  |  |  | Буглак Даниил | 4h |
| 40 | 4.2.6 | Составить тесты неполных данных и выполнить проверку с баг-репортами. |  | 5h | 2026-12-02 | 2026-12-02 | 34, 39 |  |  |  | Ярмов Никита | 5h |
| 41 | 4.3.1 | Зафиксировать правила «можно приготовить» и «не хватает продуктов». |  | 5h | 2026-11-05 | 2026-11-06 | 35 |  |  | FRIDGE Подготовка 3 часа 15 минут | Ярмов Никита | 5h |
| 42 | 4.3.2 | Реализовать сопоставление набора пользователя с составом рецептов. |  | 11h | 2026-11-27 | 2026-12-01 | 37 |  |  |  | Сковороднев Денис | 11h |
| 43 | 4.3.3 | Добавить сортировку по числу недостающих продуктов и явный результат совпадения. |  | 7h | 2026-12-01 | 2026-12-02 | 42 |  |  |  | Сковороднев Денис | 7h |
| 44 | 4.3.4 | Сверстать выдачу и обозначения доступных/недостающих ингредиентов. |  | 6h | 2026-11-26 | 2026-11-27 | 57 |  |  |  | Буглак Даниил | 6h |
| 45 | 4.3.5 | Интегрировать выдачу с поиском, показать отсутствие результатов и ошибки. |  | 6h | 2026-12-02 | 2026-12-03 | 39, 43 |  |  |  | Буглак Даниил | 6h |
| 46 | 4.3.6 | Подготовить тесты совпадений, количества, дублей и пустого ввода. |  | 5h | 2026-11-17 | 2026-11-19 | 55 |  |  | FRIDGE Подготовка 3 часа 15 минут | Ярмов Никита | 5h |
| 47 | 4.3.7 | Проверить ранжирование, завести баги и подтвердить исправления. |  | 5h | 2026-12-03 | 2026-12-03 | 40, 45 |  |  |  | Ярмов Никита | 5h |
| 48 | 4.4.1 | Описать сценарий просмотра рецепта и расчёт недостающих продуктов. |  | 4h | 2026-11-10 | 2026-11-11 | 25 |  |  | FRIDGE Подготовка 3 часа 15 минут | Ярмов Никита | 4h |
| 49 | 4.4.2 | Вернуть состав, шаги и недостающие ингредиенты в согласованном формате. |  | 7h | 2026-12-02 | 2026-12-02 | 43 |  |  |  | Сковороднев Денис | 7h |
| 50 | 4.4.3 | Сверстать страницу рецепта с шагами и перечнем недостающих продуктов. |  | 9h | 2026-11-27 | 2026-11-30 | 44 |  |  |  | Буглак Даниил | 9h |
| 51 | 4.4.4 | Интегрировать страницу с данными и переходом из выдачи. |  | 4h | 2026-12-03 | 2026-12-03 | 45, 49 |  |  |  | Буглак Даниил | 4h |
| 52 | 4.4.5 | Подготовить тесты и проверить навигацию, полноту данных и крайние случаи. |  | 4h | 2026-12-03 | 2026-12-04 | 47, 51 |  |  |  | Ярмов Никита | 4h |
| 53 | 4.4.6 | Оформить дефекты и повторно проверить исправленные сценарии. |  | 4h | 2026-12-04 | 2026-12-04 | 52 |  |  |  | Ярмов Никита | 4h |
| 54 | START | Начало проекта | milestone | 0h | 2026-10-19 | 2026-10-19 |  |  |  | FRIDGE Подготовка 3 часа 15 минут |  |  |
| 55 | PLAN | План и требования утверждены | milestone | 0h | 2026-11-17 | 2026-11-17 | 16 |  |  | FRIDGE Подготовка 3 часа 15 минут |  |  |
| 56 | END | Завершение проекта | milestone | 0h | 2026-12-09 | 2026-12-09 | 14 |  | 2026-12-15 |  |  |  |
| 57 | M3 | Запуск frontend | milestone | 0h | 2026-11-26 | 2026-11-26 | 18 |  |  |  |  |  |
| 58 | M4 | Начало реализации с 26 ноября | milestone | 0h | 2026-11-26 | 2026-11-26 | 55 | start no earlier than 2026-11-26 |  |  |  |  |

Notes:
- 1: ИСР: 1.1.1. Этап: Подготовка. Трудозатраты: 6 чел.-ч.
- 2: ИСР: 1.1.2. Этап: Подготовка. Трудозатраты: 12 чел.-ч.
- 3: ИСР: 1.1.3. Этап: Подготовка. Трудозатраты: 11 чел.-ч.
- 4: ИСР: 1.1.4. Этап: Подготовка. Трудозатраты: 4 чел.-ч.
- 5: ИСР: 1.2.1. Этап: Управление. Трудозатраты: 6 чел.-ч.
- 6: ИСР: 1.2.2. Этап: Управление. Трудозатраты: 8 чел.-ч.
- 7: ИСР: 1.2.3. Этап: Управление. Трудозатраты: 6 чел.-ч.
- 8: ИСР: 1.2.4. Этап: Управление. Трудозатраты: 8 чел.-ч.
- 9: ИСР: 1.2.5. Этап: Управление. Трудозатраты: 4 чел.-ч.
- 10: ИСР: 1.2.6. Этап: Управление. Трудозатраты: 8 чел.-ч.
- 11: ИСР: 1.2.7. Этап: Управление. Трудозатраты: 4 чел.-ч.
- 12: ИСР: 1.2.8. Этап: Управление. Трудозатраты: 8 чел.-ч.
- 13: ИСР: 1.3.1. Этап: Завершение. Трудозатраты: 4 чел.-ч.
- 14: ИСР: 1.3.2. Этап: Завершение. Трудозатраты: 6 чел.-ч.
- 15: ИСР: 2.1.1. Этап: Организация. Трудозатраты: 2 чел.-ч.
- 16: ИСР: 2.1.2. Этап: Организация. Трудозатраты: 4 чел.-ч.
- 17: ИСР: 2.1.3. Этап: Реализация. Трудозатраты: 2 чел.-ч.
- 18: ИСР: 2.1.4. Этап: Реализация. Трудозатраты: 4 чел.-ч.
- 19: ИСР: 2.1.5. Этап: Проверка. Трудозатраты: 4 чел.-ч.
- 20: ИСР: 2.2.1. Этап: Реализация. Трудозатраты: 4 чел.-ч.
- 21: ИСР: 2.2.2. Этап: Реализация. Трудозатраты: 8 чел.-ч.
- 22: ИСР: 2.2.3. Этап: Реализация. Трудозатраты: 4 чел.-ч.
- 23: ИСР: 2.2.4. Этап: Проверка. Трудозатраты: 2 чел.-ч.
- 24: ИСР: 3.1.1. Этап: Подготовка. Трудозатраты: 8 чел.-ч.
- 25: ИСР: 3.1.2. Этап: Подготовка. Трудозатраты: 5 чел.-ч.
- 26: ИСР: 3.1.3. Этап: Подготовка. Трудозатраты: 6 чел.-ч.
- 27: ИСР: 3.2.1. Этап: Подготовка. Трудозатраты: 11 чел.-ч.
- 28: ИСР: 3.2.2. Этап: Подготовка. Трудозатраты: 8 чел.-ч.
- 29: ИСР: 4.1.1. Этап: Подготовка. Трудозатраты: 4 чел.-ч.
- 30: ИСР: 4.1.2. Этап: Подготовка. Трудозатраты: 5 чел.-ч.
- 31: ИСР: 4.1.3. Этап: Реализация. Трудозатраты: 11 чел.-ч.
- 32: ИСР: 4.1.4. Этап: Реализация. Трудозатраты: 6 чел.-ч.
- 33: ИСР: 4.1.5. Этап: Проверка. Трудозатраты: 3 чел.-ч.
- 34: ИСР: 4.1.6. Этап: Проверка. Трудозатраты: 4 чел.-ч.
- 35: ИСР: 4.2.1. Этап: Подготовка. Трудозатраты: 4 чел.-ч.
- 36: ИСР: 4.2.2. Этап: Подготовка. Трудозатраты: 6 чел.-ч.
- 37: ИСР: 4.2.3. Этап: Реализация. Трудозатраты: 11 чел.-ч.
- 38: ИСР: 4.2.4. Этап: Реализация. Трудозатраты: 6 чел.-ч.
- 39: ИСР: 4.2.5. Этап: Реализация. Трудозатраты: 4 чел.-ч.
- 40: ИСР: 4.2.6. Этап: Проверка. Трудозатраты: 5 чел.-ч.
- 41: ИСР: 4.3.1. Этап: Подготовка. Трудозатраты: 5 чел.-ч.
- 42: ИСР: 4.3.2. Этап: Реализация. Трудозатраты: 11 чел.-ч.
- 43: ИСР: 4.3.3. Этап: Реализация. Трудозатраты: 7 чел.-ч.
- 44: ИСР: 4.3.4. Этап: Реализация. Трудозатраты: 6 чел.-ч.
- 45: ИСР: 4.3.5. Этап: Реализация. Трудозатраты: 6 чел.-ч.
- 46: ИСР: 4.3.6. Этап: Проверка. Трудозатраты: 5 чел.-ч.
- 47: ИСР: 4.3.7. Этап: Проверка. Трудозатраты: 5 чел.-ч.
- 48: ИСР: 4.4.1. Этап: Подготовка. Трудозатраты: 4 чел.-ч.
- 49: ИСР: 4.4.2. Этап: Реализация. Трудозатраты: 7 чел.-ч.
- 50: ИСР: 4.4.3. Этап: Реализация. Трудозатраты: 9 чел.-ч.
- 51: ИСР: 4.4.4. Этап: Реализация. Трудозатраты: 4 чел.-ч.
- 52: ИСР: 4.4.5. Этап: Проверка. Трудозатраты: 4 чел.-ч.
- 53: ИСР: 4.4.6. Этап: Проверка. Трудозатраты: 4 чел.-ч.
- 54: ИСР: START. Этап: Веха. Трудозатраты: 0 чел.-ч.
- 55: ИСР: PLAN. Этап: Веха. Трудозатраты: 0 чел.-ч.
- 56: ИСР: END. Этап: Веха. Трудозатраты: 0 чел.-ч.
- 57: ИСР: M3. Этап: Веха. Трудозатраты: 0 чел.-ч.
- 58: ИСР: M4. Этап: Веха. Трудозатраты: 0 чел.-ч.
